# Pfizer Continuum Project Plan

Schedule from MS Project, 2012-12-03 to 2013-11-29, A marks actual dates.

## Calendars

- Standard: Mon-Fri 08:00-12:00, 13:00-17:00; Sat-Sun off.

## Resources

| Resource |
| --- |
| Bala |
| Smita |
| Nelli |
| Paula |
| Hugh |
| Steve Matyas |
| Todd |
| Steve L |
| Sohal |
| Harsha |
| Naveen |
| BDA Team |
| Systems Team |
| QA3 |
| QA4 |
| QA5 |
| Vrushali |
| Max |
| VCDE |
| Anu |
| rushali |
| CTEP |
| caXchange |
| C3PR |
| caAERS |
| PSC |
| LV |
| BDA |
| "C3PR |
| Documentation |
| caGrid |
| QA |
| BAM |
| Edmond |
| NCI |
| SAIC-F |
| Web Team |
| Bill Dyer |
| CCTS Team |
| John S |
| Patrick |
| Architects |
| Christo |
| John |
| Rhett |
| Nellie |
| Steve |
| Kalpesh |
| David L |
| Stevel L |
| Kumar C |
| Gia |
| Wendy |
| Raj |
| Steve M |
| Lauren |
| Systems |
| CTRO |
| Hannes |
| SMEs |
| Gisele |
| Joe |
| CTRP Dev team |
| CBIIT |
| All |
| Analysts |
| TBD |
| Charles |
| ESST |
| Developers |
| Lisa |
| Christophe |
| Krishna |
| QA1 |
| QA2 |
| David |
| Security |
| Arch |
| Tech Leads |
| Paula B |
| Kalpana |
| KK |
| Abe |
| Kim |
| Vijay |
| CAT |
| George |
| Larry |
| Michael O |
| Resource 1 |
| Resource 2 |
| Resource3 |
| Resource 4 |
| Resource 5 |
| Gisele S |
| Dianne R |
| HR |
| NA |
| SL |
| ScenPro |
| 5AM |
| TP |
| EM |
| KE |
| JM |
| DL |
| Paul |
| Michael |
| Eilis |
| Team |
| Dev team |
| Ram P |
| NIH 508 team |
| Bryan |
| Bill D |
| Marina |
| Ye |
| Rashmi |
| Ann Wiley |
| Winston |
| QA* |
| Systems* |
| Sree |
| S |
| Systemss* |
| Mike |

## Schedule

| ID | WBS | Task | Type | Duration | Start | Finish | Predecessors | Complete | Remaining | Total slack | Free slack | Constraint | Resources | Work | Actual work |
| --- | --- | --- | --- | --- | --- | --- | --- | --- | --- | --- | --- | --- | --- | --- | --- |
| 1 | 1 | **caArray** |  | 260d | 2012-12-03 A | 2013-11-29 |  | 29% | 185.02d | 0d |  | start no earlier than 2012-12-03 |  | 7431.6h | 2098.4h |
| 2 | 1.1 | **caArray 2.5.1** |  | 162d | 2012-12-03 A | 2013-07-16 |  | 91% | 14.98d | 98d |  |  |  | 2291.6h | 2098.4h |
| 3 | 1.1.1 | MILESTONE: PROJECT KICKOFF |  | 1d | 2012-12-06 A | 2012-12-06 A |  | 100% |  |  |  | start no earlier than 2012-12-06 |  |  |  |
| 4 | 1.1.2 | User Support - Rembrandt, etc. |  | 3d | 2012-12-03 A | 2012-12-05 A |  | 100% |  |  |  |  | Winston; Rashmi | 48h | 48h |
| 5 | 1.1.3 | Support Apache upgrade of all tiers |  | 5d | 2012-12-06 A | 2012-12-12 A | 4 | 100% |  |  |  |  | Rashmi | 40h | 40h |
| 6 | 1.1.4 | Review TRANSCEND UAT plan |  | 1d | 2012-12-13 A | 2012-12-13 A | 5 | 100% |  |  |  |  | Rashmi | 8h | 8h |
| 7 | 1.1.5 | Vacation and Team Member Unavailability |  | 10d | 2012-12-14 A | 2012-12-27 A | 6 | 100% |  |  |  |  | Winston; Rashmi | 160h | 160h |
| 8 | 1.1.6 | OSDI: Obtain GitHub accounts for all team members |  | 1d | 2012-12-28 A | 2012-12-28 A | 7 | 100% |  |  |  |  | Winston; Rashmi | 16h | 16h |
| 9 | 1.1.7 | OSDI: Do initial analysis, generate author list, fill out checklist |  | 3d | 2012-12-31 A | 2013-01-02 A | 8 | 100% |  |  |  |  | Winston; Rashmi | 48h | 48h |
| 10 | 1.1.8 | Rewrite PMP in EPLC format and update Project Plan |  | 2d | 2013-01-03 A | 2013-01-04 A | 9 | 100% |  |  |  |  | Rashmi | 16h | 16h |
| 11 | 1.1.9 | OSDI: Obtain access to NCIP channel in GitHub (Dependency) |  | 7d | 2012-12-31 A | 2013-01-08 A | 8 | 100% |  |  |  |  | Sree; Larry | 112h | 112h |
| 12 | 1.1.10 | OSDI: Generate a local git copy |  | 2d | 2013-01-03 A | 2013-01-04 A | 9 | 100% |  |  |  |  | Winston | 16h | 16h |
| 13 | 1.1.11 | OSDI: Split software and tools from docs and test data. |  | 3d | 2013-01-07 A | 2013-01-09 A | 12 | 100% |  |  |  |  | Winston | 24h | 24h |
| 14 | 1.1.12 | OSDI: Migrate local git copy to GitHub under NCIP |  | 4d | 2013-01-10 A | 2013-01-15 A | 11, 13 | 100% |  |  |  |  | Winston | 32h | 32h |
| 15 | 1.1.13 | OSDI: Change license/copyright text and merge into GitHub repo. |  | 2d | 2013-01-16 A | 2013-01-17 A | 14 | 100% |  |  |  |  | Winston | 16h | 16h |
| 16 | 1.1.14 | OSDI: Make build changes. (Remove svn dependencies, pull jboss from the tools directory, etc.) |  | 6d | 2013-01-18 A | 2013-01-25 A | 15 | 100% |  |  |  |  | Winston | 48h | 48h |
| 17 | 1.1.15 | OSDI: Update README and other documentation |  | 1d | 2013-02-04 A | 2013-02-04 A | 16 | 100% |  |  |  |  | Winston; Rashmi | 16h | 16h |
| 18 | 1.1.16 | Section 508 Compliance Improvements |  | 21d | 2013-02-05 A | 2013-03-05 A | 17 | 100% |  |  |  |  | Winston; Rashmi | 336h | 336h |
| 19 | 1.1.17 | OSDI: Work with the Systems team to update and test the Dev AHP build. |  | 4d | 2013-02-27 A | 2013-03-04 A | 16 | 100% |  |  |  |  | Winston; Systems | 64h | 64h |
| 20 | 1.1.18 | OSDI: Final test of AHP build on Dev tier |  | 1d | 2013-03-05 A | 2013-03-05 A | 19 | 100% |  |  |  |  | Winston; Systems; Rashmi | 24h | 24h |
| 21 | 1.1.19 | OSDI: Work with the Systems team to update/test AHP on QA/STAGE |  | 15d | 2013-03-06 A | 2013-03-26 A | 20 | 100% |  |  |  |  | Winston; Rashmi | 240h | 240h |
| 22 | 1.1.20 | Performance and other Bug Fixes |  | 20d | 2013-03-12 A | 2013-04-08 A | 20 | 100% |  |  |  | start no earlier than 2013-03-12 | Winston | 160h | 160h |
| 23 | 1.1.21 | OSDI: Work with the Systems team to update/test AHP on PROD,Curation,Training |  | 15d | 2013-03-27 A | 2013-04-16 A | 21 | 100% |  |  |  |  | Winston | 120h | 120h |
| 24 | 1.1.22 | Automated Regression Testing on QA tier |  | 5d | 2013-04-09 A | 2013-04-15 A | 22 | 100% |  |  |  |  | QA* | 40h | 40h |
| 25 | 1.1.23 | Manual Regression Testing on QA tier |  | 4d | 2013-04-16 A | 2013-04-19 A | 24 | 100% |  |  |  |  | QA* | 32h | 32h |
| 26 | 1.1.24 | Installer Testing |  | 4d | 2013-04-22 A | 2013-04-25 A | 25 | 100% |  |  |  |  | QA* | 32h | 32h |
| 27 | 1.1.25 | QA reviews Section 508 compliance report |  | 2d | 2013-04-26 A | 2013-04-29 A | 26 | 100% |  |  |  |  | QA* | 16h | 16h |
| 28 | 1.1.26 | Appscan on QA tier |  | 20d | 2013-04-09 A | 2013-05-06 A | 22 | 100% |  |  |  |  | Systems* | 160h | 160h |
| 29 | 1.1.27 | Test Results Review and Reporting |  | 3d | 2013-05-07 A | 2013-05-09 A | 28, 24, 25, 26, 27 | 100% |  |  |  |  | QA* | 24h | 24h |
| 30 | 1.1.28 | Bug Fixes - Critical |  | 14d | 2013-05-10 A | 2013-06-04 A | 29 | 100% |  |  |  |  | Winston | 112h | 112h |
| 31 | 1.1.29 | QA critical fixes |  | 5d | 2013-06-04 A | 2013-06-11 A | 30 | 100% |  |  |  |  | QA* | 40h | 40h |
| 32 | 1.1.30 | Redo Appscan on QA tier |  | 10.7d | 2013-06-04 A | 2013-06-18 A | 30 | 100% |  |  |  | finish no earlier than 2013-06-18 | Systems* | 85.6h | 85.6h |
| 33 | 1.1.31 | QA RC3 (OpenSymphony File Reference Change) |  | 2d | 2013-06-19 A | 2013-06-20 A | 32 | 100% |  |  |  |  | Marina [12.5%] | 2h | 2h |
| 34 | 1.1.32 | Finalize the test report, pass peer review, and obtain QA Director approval |  | 5d | 2013-06-21 A | 2013-06-27 | 33 | 90% | 0.5d | 98d | 0d |  | Marina [10%]; Winston [10%]; Mike [10%] | 12h | 10.8h |
| 35 | 1.1.33 | Deploy to STAGE |  | 1d | 2013-06-28 | 2013-06-28 | 29, 34 |  |  | 142d | 0d |  | Systems* | 8h |  |
| 36 | 1.1.34 | Appscan on STAGE tier |  | 5d | 2013-07-01 | 2013-07-05 | 35 |  |  | 143d | 1d |  | Systems* | 40h |  |
| 37 | 1.1.35 | Automated Regression Testing on STAGE |  | 4d | 2013-07-01 | 2013-07-04 | 35 |  |  | 142d | 0d |  | QA* | 32h |  |
| 38 | 1.1.36 | API Testing on STAGE |  | 2d | 2013-07-05 | 2013-07-08 | 37 |  |  | 142d | 0d |  | QA* | 16h |  |
| 39 | 1.1.37 | Test Results Review and Reporting |  | 3d | 2013-07-09 | 2013-07-11 | 37, 38, 36 |  |  | 142d | 0d |  | QA* | 24h |  |
| 40 | 1.1.38 | Create release artifacts |  | 1d | 2013-07-01 | 2013-07-01 | 35 |  |  | 153d |  |  | QA*; Winston; Mike | 24h |  |
| 41 | 1.1.39 | Deploy to PRODUCTION |  | 2d | 2013-07-12 | 2013-07-15 | 39 |  |  | 142d | 0d |  | Systems* | 16h |  |
| 42 | 1.1.40 | Update product landing page |  | 1d | 2013-07-16 | 2013-07-16 | 41 |  |  | 142d |  |  | Mike; Winston | 16h |  |
| 43 | 1.1.41 | QA smoke tests PRODUCTION |  | 1d | 2013-07-16 | 2013-07-16 | 41 |  |  | 142d | 0d |  | QA*; Mike | 16h |  |
| 44 | 1.1.42 | MILESTONE: RELEASE 2.5.1 | milestone | 0d | 2013-07-16 | 2013-07-16 | 43 |  |  | 98d |  | start no earlier than 2012-01-09 |  |  |  |

| ID | WBS | Task | Type | Duration | Start | Finish | Predecessors | Total slack | Free slack | Constraint | Resources | Work |
| --- | --- | --- | --- | --- | --- | --- | --- | --- | --- | --- | --- | --- |
| 45 | 1.2 | **caArray 2.5.2** |  | 98d | 2013-06-19 | 2013-11-01 |  | 20d |  |  |  | 1044h |
| 46 | 1.2.1 | **Address FISMA POAM issues** |  | 50d | 2013-06-19 | 2013-08-27 |  | 30d |  |  |  | 324h |
| 47 | 1.2.1.1 | Non-development support (documentation, discussion, etc) |  | 30d | 2013-06-19 | 2013-07-30 |  | 132d |  | start no earlier than 2013-06-19 | Winston [5%]; Mike [5%] | 24h |
| 48 | 1.2.1.2 | Development |  | 30d | 2013-07-03 | 2013-08-13 |  | 20d | 0d | start no earlier than 2013-07-03 | Winston | 240h |
| 49 | 1.2.1.3 | QA |  | 30d | 2013-07-17 | 2013-08-27 |  | 112d |  | start no earlier than 2013-07-17 | Marina [25%] | 60h |
| 50 | 1.2.2 | **Upgrade to Java 1.7** |  | 20d | 2013-08-14 | 2013-09-10 |  | 20d |  |  |  | 60h |
| 51 | 1.2.2.1 | Development |  | 10d | 2013-08-14 | 2013-08-27 | 48 | 20d | 0d | start no earlier than 2013-07-03 | Winston [50%] | 40h |
| 52 | 1.2.2.2 | QA |  | 10d | 2013-08-28 | 2013-09-10 | 51 | 20d | 0d | start no earlier than 2013-07-17 | Marina [25%] | 20h |
| 53 | 1.2.3 | **Upgrade CSM/UPT** |  | 40d | 2013-07-03 | 2013-08-27 |  | 48d |  |  |  | 60h |
| 54 | 1.2.3.1 | Development |  | 10d | 2013-07-03 | 2013-07-16 |  | 78d | 30d | start no earlier than 2013-07-03 | Winston [50%] | 40h |
| 55 | 1.2.3.2 | QA |  | 10d | 2013-08-14 | 2013-08-27 | 48 | 92d | 10d | start no earlier than 2013-07-17 | Marina [25%] | 20h |
| 56 | 1.2.4 | **Fix bugs/address TRANSCEND issues** |  | 30d | 2013-08-28 | 2013-10-08 |  | 38d |  |  |  | 200h |
| 57 | 1.2.4.1 | Development |  | 20d | 2013-08-28 | 2013-09-24 | 51, 54 | 92d |  | start no earlier than 2013-07-03 | Winston | 160h |
| 58 | 1.2.4.2 | QA |  | 20d | 2013-09-11 | 2013-10-08 | 52, 55 | 82d |  | start no earlier than 2013-07-17 | Marina [25%] | 40h |
| 59 | 1.2.5 | Support Gforge Retirement |  | 5d | 2013-09-11 | 2013-09-17 | 52 | 20d | 0d |  | Winston; Mike | 80h |
| 60 | 1.2.6 | MILESTONE: EPLC REVIEW (as needed) |  | 2d | 2013-09-18 | 2013-09-19 | 59 | 20d | 0d | start no earlier than 2012-01-09 | Winston; Mike | 32h |
| 61 | 1.2.7 | Automated Regression Testing on QA tier |  | 5d | 2013-09-20 | 2013-09-26 | 60 | 20d | 0d |  | Marina | 40h |
| 62 | 1.2.8 | Manual Regression Testing on QA tier |  | 4d | 2013-09-27 | 2013-10-02 | 61 | 20d | 0d |  | Marina | 32h |
| 63 | 1.2.9 | Installer Testing |  | 4d | 2013-10-03 | 2013-10-08 | 62 | 20d | 0d |  | Marina | 32h |
| 64 | 1.2.10 | Section 508 testing on QA tier |  | 2d | 2013-10-09 | 2013-10-10 | 63 | 20d | 0d |  | Marina | 16h |
| 65 | 1.2.11 | Appscan on QA tier |  | 5d | 2013-09-27 | 2013-10-03 | 61 | 25d | 5d |  | Systems* [20%] | 8h |
| 66 | 1.2.12 | Test Results Review and Reporting |  | 3d | 2013-10-11 | 2013-10-15 | 65, 61, 62, 63, 64 | 20d | 0d |  | Marina | 24h |
| 67 | 1.2.13 | Deploy to STAGE |  | 1d | 2013-10-16 | 2013-10-16 | 66 | 20d | 0d |  | Systems* | 8h |
| 68 | 1.2.14 | Appscan on STAGE tier |  | 5d | 2013-10-17 | 2013-10-23 | 67 | 21d | 1d |  | Systems* [20%] | 8h |
| 69 | 1.2.15 | Automated Regression Testing on STAGE |  | 4d | 2013-10-17 | 2013-10-22 | 67 | 20d | 0d |  | Marina | 32h |
| 70 | 1.2.16 | API Testing on STAGE |  | 2d | 2013-10-23 | 2013-10-24 | 69 | 20d | 0d |  | Marina | 16h |
| 71 | 1.2.17 | Test Results Review and Reporting |  | 3d | 2013-10-25 | 2013-10-29 | 68, 69, 70 | 20d | 0d |  | Marina | 24h |
| 72 | 1.2.18 | Create release artifacts |  | 1d | 2013-10-17 | 2013-10-17 | 67 | 31d |  |  | Mike | 8h |
| 73 | 1.2.19 | Deploy to PRODUCTION |  | 2d | 2013-10-30 | 2013-10-31 | 71 | 20d | 0d |  | Systems* | 16h |
| 74 | 1.2.20 | Update product landing page |  | 1d | 2013-11-01 | 2013-11-01 | 73 | 20d |  |  | Systems; Mike | 16h |
| 75 | 1.2.21 | QA smoke tests PRODUCTION |  | 1d | 2013-11-01 | 2013-11-01 | 73 | 20d | 0d |  | Marina | 8h |
| 76 | 1.2.22 | MILESTONE: RELEASE 2.5.2 | milestone | 0d | 2013-11-01 | 2013-11-01 | 75 | 20d |  | start no earlier than 2012-01-09 |  |  |
| 77 | 1.3 | User Support |  | 256d | 2012-12-07 | 2013-11-29 | 3 | 0d |  |  | Winston; Rashmi | 4096h |
| 82 | 1.4 | *QA and Systems are EXTERNAL resources/dependencies | milestone | 0d | 2012-12-03 | 2012-12-03 |  | 304d |  |  |  |  |
